Task ID,Section,Description,Owner,Dependencies,Pre-requisites,Definition of Done,Status,KPIs,Target Sprint,Artifacts To Track,Validation Method,Estimate (O/M/P),Planned Start,Planned Finish,Percent Complete,Dependency Types,Cadence
TRACK-003,Tracking,Risk Register UI - View and update risks with mitigation tracking,PM + Security (STOA-Foundation),"EXP-REPORTS-003,IFC-118",FILE:docs/compliance-and-governance/governance/risk-register.csv;FILE:docs/shared/risk-mitigation-plan.md,Risk register displayed in table; add/edit risk modal; mitigation status tracking; export capability,Completed,"CRUD operations, history tracking",14,ARTIFACT:apps/project-tracker/components/tracking/RiskRegister.tsx;ARTIFACT:apps/project-tracker/app/api/tracking/risks/route.ts;EVIDENCE:.specify/sprints/sprint-14/attestations/TRACK-003/attestation.json,VALIDATE:pnpm --filter project-tracker typecheck,90/180/360,2026-02-22,2026-02-22,100,"EXP-REPORTS-003:FS,IFC-118:FS",
TRACK-004,Tracking,AI Metrics UI - Model performance drift detection cost tracking,AI Specialist + SRE (STOA-Intelligence),"IFC-117,AUTOMATION-002",FILE:artifacts/metrics/ai-metrics.json;FILE:infra/monitoring/ai-grafana-dashboard.json,"Dashboard shows AI latency, accuracy, cost per model; drift alerts; refresh capability",Completed,"Real-time metrics, <5% drift threshold",14,ARTIFACT:apps/project-tracker/components/tracking/AIMetrics.tsx;ARTIFACT:apps/project-tracker/app/api/tracking/ai/route.ts;EVIDENCE:.specify/sprints/sprint-14/attestations/TRACK-004/attestation.json,VALIDATE:pnpm --filter project-tracker typecheck,90/180/360,2026-02-22,2026-02-22,100,"IFC-117:FS,AUTOMATION-002:FS",
TRACK-005,Tracking,Security Dashboard UI - Vulnerability tracking scan results security posture,Security Eng (STOA-Security),"EXC-SEC-001,IFC-121",FILE:artifacts/reports/security/audit-latest.json;FILE:scripts/pnpm-audit-report.js,Dashboard shows vulnerability counts by severity; scan history; run-scan button; remediation tracking,Completed,"Zero critical vulns, weekly scans",14,ARTIFACT:apps/project-tracker/components/tracking/SecurityDashboard.tsx;ARTIFACT:apps/project-tracker/app/api/tracking/security/route.ts;EVIDENCE:.specify/sprints/sprint-14/attestations/TRACK-005/attestation.json,AUDIT:security-review,90/180/360,2026-02-22,2026-02-22,100,"EXC-SEC-001:FS,IFC-121:FS",
TRACK-006,Tracking,Build Health UI - Validation results build status test results,DevOps (STOA-Automation),"EXP-REPORTS-005,ENV-005-AI",FILE:artifacts/reports/turbo-validation.json;FILE:artifacts/reports/audit-report.json,"Dashboard shows build success rate, test results, validation status; run-validation button",Completed,"100% builds tracked, <30s validation",14,ARTIFACT:apps/project-tracker/components/tracking/BuildHealth.tsx;ARTIFACT:apps/project-tracker/app/api/tracking/build/route.ts;EVIDENCE:.specify/sprints/sprint-14/attestations/TRACK-006/attestation.json,VALIDATE:pnpm test,90/180/360,2026-07-05,2026-02-22,100,"EXP-REPORTS-005:FS,ENV-005-AI:FS",
IFC-164,AI/ML,Ollama Local Development - Real Integration & Benchmarks,pg-208,"IFC-005,IFC-086,IFC-095",FILE:apps/ai-worker/src/config/ai.config.ts;FILE:apps/ai-worker/src/chains/scoring.chain.ts;ENV:AI scoring chain stable and tested;ENV:Docker infrastructure mature;POLICY:Cost tracking validated,"Complete Ollama integration with REAL benchmarks: (1) Implement ChatOllama in scoring.chain.ts, (2) Run real accuracy benchmarks against test leads, (3) Validate cost savings with actual metrics, (4) Update accuracy-benchmarks.json with real data; Follow-up to IFC-085 which only added config but never tested",Backlog,Real Ollama tests passing; accuracy-benchmarks.json contains measured data; dev cost reduction verified,26,ARTIFACT:apps/ai-worker/src/chains/ollama-integration.ts;ARTIFACT:artifacts/benchmarks/accuracy-benchmarks.json;ARTIFACT:artifacts/benchmarks/ollama-real-benchmark-report.json;EVIDENCE:.specify/sprints/sprint-20/attestations/IFC-164/context_ack.json,VALIDATE:pnpm test,180/360/720,2026-12-13,2026-12-26,0,"IFC-005:FS,IFC-086:FS,IFC-095:FS",
IFC-165,Performance,Performance Baseline - Real Benchmarks with Live Infrastructure,ifc-obs,"ENV-015-AI,IFC-003,ENV-005-AI",FILE:apps/api/src/index.ts;FILE:packages/db/prisma/schema.prisma;ENV:API server running;ENV:Database running;ENV:Docker infrastructure stable;POLICY:All services healthy,"Run REAL performance benchmarks: (1) Start API server and database, (2) Execute artifacts/benchmarks/run-baseline-benchmark.ts, (3) Capture actual API p95/p99 latencies, (4) Capture actual DB query times, (5) Update baseline.json with measured data; Follow-up to ENV-015-AI which created config but had simulated data",Backlog,Real API latencies measured; Real DB query times; baseline.json contains actual measurements,31,ARTIFACT:artifacts/benchmarks/baseline.json;ARTIFACT:artifacts/reports/performance-baseline-report.json;EVIDENCE:.specify/sprints/sprint-20/attestations/IFC-165/context_ack.json,VALIDATE:pnpm test;AUDIT:performance-review,180/360/720,2027-02-21,2027-03-06,0,"ENV-015-AI:FS,IFC-003:FS,ENV-005-AI:FS",
IFC-166,Documentation,NBA Demo Video Recording,pg-208,IFC-039,FILE:docs/planning/nba-demo.md;ENV:System stable and running;ENV:OpenAI API configured;POLICY:Demo scenarios validated,Record actual nba-demo.mp4 video demonstrating Next Best Action feature with real AI responses; Follow-up from IFC-039,Backlog,"Video recorded, demonstrates AI value, <5min duration",37,ARTIFACT:artifacts/misc/nba-demo.mp4;EVIDENCE:.specify/sprints/sprint-24/attestations/IFC-166/context_ack.json,VALIDATE:pnpm typecheck,120/240/480,2027-05-16,2027-05-29,0,IFC-039:FS,
IFC-175,Validation,RAG Production Validation - Follow-up to IFC-039,pg-208,IFC-039,FILE:apps/ai-worker/src/chains/rag-context.chain.ts;FILE:apps/ai-worker/src/services/retrieval-service.ts;ENV:Supabase pgvector ready;ENV:OpenAI API configured;ENV:Documents indexed,Validate RAG chain works with real pgvector in production; test RetrievalService integration with live Supabase; verify ACL permissions; test with indexed documents; Follow-up from IFC-039,Backlog,RAG retrieval works in production; <200ms latency; ACL filtering verified; relevance >85%,37,ARTIFACT:artifacts/misc/rag-production-validation.json;EVIDENCE:.specify/sprints/sprint-24/attestations/IFC-175/context_ack.json,VALIDATE:integration-test,180/360/720,2027-05-16,2027-05-29,0,IFC-039:FS,
IFC-167,Platform,Wire workers to pnpm dev startup - Follow-up to IFC-163,DevOps (STOA-Automation),IFC-163,FILE:package.json;FILE:turbo.json;FILE:apps/workers/events-worker/package.json;FILE:apps/workers/ingestion-worker/package.json,Workers auto-start with pnpm dev; all 3 workers running; health checks pass; verified by: pnpm dev starts all services,Completed,All workers start <30s; zero manual startup required,14,ARTIFACT:package.json;ARTIFACT:turbo.json;EVIDENCE:.specify/sprints/sprint-14/attestations/IFC-167/attestation.json,VALIDATE:pnpm typecheck,60/120/240,2026-06-28,2026-07-05,100,IFC-163:FS,
IFC-168,AI/ML,Convert AI worker to BullMQ queue consumer - Follow-up to IFC-005/IFC-085,AI Specialist + Backend Dev (STOA-Intelligence),"IFC-005,IFC-085,IFC-163",FILE:apps/ai-worker/src/index.ts;FILE:apps/workers/shared/src/base-worker.ts;ENV:BullMQ configured;ENV:Redis running,AI worker extends BaseWorker; implements job handlers for scoring and predictions; processes jobs from queue; health endpoint exposed; verified by: pnpm test,Completed,Queue jobs processed <2s; zero dropped jobs; health check passes,14,ARTIFACT:apps/ai-worker/src/index.ts;ARTIFACT:apps/ai-worker/src/jobs/scoring.job.ts;ARTIFACT:apps/ai-worker/src/jobs/prediction.job.ts;EVIDENCE:.specify/sprints/sprint-14/attestations/IFC-168/attestation.json,VALIDATE:pnpm test;VALIDATE:pnpm test:integration,120/240/480,2026-06-30,2026-07-09,100,"IFC-005:FS,IFC-085:FS,IFC-163:FS",
IFC-169,Security,"Require Supabase env vars - Follow-up to IFC-006 REOPENED 16/11/2026 (self-claimed done, DoD partly met): DoD 'remove mock key fallback': getDevelopmentSupabaseConfig still falls back to TEST_MOCK_KEY.",ifc-obs,IFC-006,FILE:apps/api/src/lib/supabase.ts;FILE:apps/api/src/index.ts;FILE:docs/security/zero-trust-design.md,Remove mock key fallback; fail fast if SUPABASE_URL or SUPABASE_ANON_KEY missing; startup validation added; verified by: pnpm test,Backlog,Zero mock keys in production; startup fails without config; auth validates real tokens,39,ARTIFACT:apps/api/src/lib/supabase.ts;ARTIFACT:docs/operations/env-requirements.md;EVIDENCE:.specify/sprints/sprint-12/attestations/IFC-169/attestation.json,VALIDATE:pnpm test;AUDIT:security-review,60/120/240,2027-06-13,2027-06-26,50,IFC-006:FS,
IFC-170,Notifications,"Implement Twilio SMS channel - Follow-up to IFC-157 REOPENED 16/11/2026 (self-claimed done, DoD partly met): DoD 'real SMS delivery, status tracking, rate limiting': the Twilio client is imported by nothing outside the adapters package; SMS returns 'not configured'.",pg-208,IFC-157,ENV:Twilio account configured;ENV:TWILIO_ACCOUNT_SID set;ENV:TWILIO_AUTH_TOKEN set,Uncomment Twilio SDK calls; implement real SMS delivery; add delivery status tracking; rate limiting; verified by: pnpm test,Backlog,SMS delivery success >95%; delivery status tracked; rate limits enforced,44,ARTIFACT:packages/adapters/src/messaging/twilio/client.ts;EVIDENCE:.specify/sprints/sprint-12/attestations/IFC-170/attestation.json;ARTIFACT:docs/architecture/adr/ADR-023-communications-inbox.md;ARTIFACT:docs/planning/prd-communications-inbox.md,VALIDATE:pnpm test,90/180/360,2027-08-22,2027-09-04,50,IFC-157:FS,
IFC-171,Notifications,"Implement webhook notification channel - Follow-up to IFC-157 REOPENED 16/11/2026 (self-claimed done, DoD partly met): DoD 'HTTP POST delivery, HMAC, backoff, DLQ': webhooks/outbound.ts is built but no app or application code uses it.",pg-208,IFC-157,,Implement HTTP POST delivery; add HMAC signature for outbound webhooks; retry with exponential backoff; DLQ handling; verified by: pnpm test,Backlog,Webhook delivery success >99%; signatures valid; retries working,44,ARTIFACT:packages/adapters/src/webhooks/outbound.ts;EVIDENCE:.specify/sprints/sprint-12/attestations/IFC-171/attestation.json;ARTIFACT:docs/architecture/adr/ADR-023-communications-inbox.md;ARTIFACT:docs/planning/prd-communications-inbox.md,VALIDATE:pnpm test,90/180/360,2027-08-22,2027-09-04,50,IFC-157:FS,
IFC-172,Integration,"Complete Microsoft Calendar integration - Follow-up to IFC-138 REOPENED 16/11/2026 (self-claimed done, DoD partly met): MicrosoftCalendarAdapter is built and exported but nothing under apps/ instantiates it; not wired to a runtime path.",ifc-074,IFC-138,FILE:packages/adapters/src/calendar/microsoft/client.ts;FILE:packages/adapters/src/calendar/shared/index.ts;ENV:Microsoft Azure app registered;ENV:OAuth credentials obtained,Implement Microsoft Graph API calls for calendar CRUD; OAuth2 with refresh tokens; bidirectional sync; webhook subscriptions; conflict resolution; verified by: pnpm test,Backlog,Sync reliability >99%; OAuth flow working; webhooks registered,31,ARTIFACT:packages/adapters/src/calendar/microsoft/client.ts;ARTIFACT:packages/adapters/src/calendar/microsoft/__tests__/client.test.ts;EVIDENCE:.specify/sprints/sprint-13/attestations/IFC-172/attestation.json;ARTIFACT:docs/architecture/adr/ADR-024-scheduling-calendar.md;ARTIFACT:docs/planning/prd-scheduling-calendar.md,VALIDATE:pnpm test;VALIDATE:pnpm test:integration,120/240/480,2027-02-21,2027-03-06,50,IFC-138:FS,
IFC-173,Integration,Complete inbound email parsing endpoint - Follow-up to IFC-144,Backend Dev + Integration Eng (STOA-Domain),IFC-144,FILE:packages/adapters/src/messaging/email/inbound.ts;ENV:Email provider webhook configured,Implement inbound email webhook endpoint; parse email headers and body; extract attachments; create case/conversation records; verified by: pnpm test,Completed,Parse accuracy >99%; attachments extracted; records created correctly,13,ARTIFACT:packages/adapters/src/messaging/email/inbound.ts;ARTIFACT:apps/api/src/modules/email/inbound.router.ts;EVIDENCE:.specify/sprints/sprint-13/attestations/IFC-173/attestation.json;ARTIFACT:docs/architecture/adr/ADR-023-communications-inbox.md;ARTIFACT:docs/planning/prd-communications-inbox.md,VALIDATE:pnpm test,90/180/360,2026-06-16,2026-06-25,100,IFC-144:FS,
IFC-174,AI/ML,Run REAL Ollama benchmarks - Follow-up to IFC-085,AI Specialist (STOA-Intelligence),"IFC-085,IFC-168",FILE:apps/ai-worker/src/chains/scoring.chain.ts;FILE:artifacts/benchmarks/accuracy-benchmarks.json;ENV:Ollama running locally;ENV:AI worker consuming queue,Replace simulated accuracy-benchmarks.json with real measured data; run actual scoring tests with Ollama; document real cost savings; verified by benchmark script,Completed,Real accuracy data captured; benchmark script passes; cost reduction verified,14,ARTIFACT:artifacts/benchmarks/accuracy-benchmarks.json;ARTIFACT:scripts/run-ollama-benchmark.ts;EVIDENCE:.specify/sprints/sprint-14/attestations/IFC-174/attestation.json,VALIDATE:pnpm test,120/240/480,2026-07-03,2026-02-23,100,"IFC-085:FS,IFC-168:FS",
PG-128,AI Settings,FLOW-045: AI Chain Versioning Admin UI - Wire IFC-086 Backend,Frontend Dev + AI Specialist (STOA-Intelligence),IFC-086,IMPLEMENTS:FLOW-045;FILE:docs/planning/prd-ai-chain-versioning.md;FILE:docs/architecture/adr/ADR-028-ai-chain-versioning.md;FILE:.specify/memory/Framework.md;FILE:audit-matrix.yml;FILE:apps/api/src/modules/chain-version/chain-version.router.ts;FILE:packages/application/src/services/ChainVersionService.ts;FILE:packages/domain/src/ai/ChainVersionConstants.ts;FILE:packages/adapters/src/memory/zep/zep-client.ts;FILE:docs/design/sitemap.md;FILE:docs/design/ui-flow-mapping.md;FILE:docs/design/page-registry.md;DESIGN:docs/design/mockups/ai-settings.png,"AI Settings page with chain version management; version list/create/activate/rollback; Zep budget gauge; A/B test config; version comparison; audit log; Response <500ms, Lighthouse >=90; targets: 100% tRPC endpoints wired",Completed,Page loads <500ms; all tRPC endpoints connected; admin actions working; Zep budget visible; audit log functional; Lighthouse >=90,14,ARTIFACT:apps/web/src/app/agent-approvals/ai-settings/page.tsx;ARTIFACT:apps/web/src/components/ai-agents/ai-settings/components/ChainVersionsDashboard.tsx;ARTIFACT:apps/web/src/components/ai-agents/ai-settings/components/ChainVersionsTable.tsx;ARTIFACT:apps/web/src/components/ai-agents/ai-settings/components/ChainVersionEditor.tsx;ARTIFACT:apps/web/src/components/ai-agents/ai-settings/components/VersionComparisonView.tsx;ARTIFACT:apps/web/src/components/ai-agents/ai-settings/components/ZepBudgetGauge.tsx;ARTIFACT:apps/web/src/components/ai-agents/ai-settings/components/VersionAuditLog.tsx;ARTIFACT:apps/web/src/components/ai-agents/ai-settings/hooks/useChainVersions.ts;EVIDENCE:.specify/sprints/sprint-14/attestations/PG-128/attestation.json,GATE:lighthouse-gte-90;VALIDATE:pnpm test,120/240/480,2026-06-28,2026-07-10,100,IFC-086:FS,
IFC-176,AI Foundation,AI Output Review - Validators Layer (Zod schemas for review inputs/outputs),Backend Dev (STOA-Quality),IFC-128,FILE:packages/domain/src/ai/review/index.ts;FILE:packages/validators/src/ai-review.ts,"Zod schemas derived from domain constants; CreateReviewInput, ReviewDecisionInput, ReviewListFilter schemas; exports match domain types; verified by: pnpm test",Completed,100% schema coverage; all domain types have validators; tests passing,3,ARTIFACT:packages/validators/src/ai-review.ts;ARTIFACT:packages/validators/src/__tests__/ai-review.test.ts;EVIDENCE:.specify/sprints/sprint-3/attestations/IFC-176/attestation.json,VALIDATE:pnpm test;GATE:no-placeholder-code,60/120/240,2026-02-02,2026-02-03,100,IFC-128:FS,
IFC-177,AI Foundation,AI Output Review - Application Layer (use cases and ports),Backend Dev (STOA-Quality),"IFC-176,IFC-128",FILE:packages/domain/src/ai/review/index.ts;FILE:packages/validators/src/ai-review.ts;FILE:docs/architecture/hex-boundaries.md,"CreateReviewUseCase, ClaimReviewUseCase, ApproveReviewUseCase, RejectReviewUseCase, ReleaseReviewUseCase, EscalateReviewUseCase; IAIOutputReviewRepository port; verified by: pnpm test",Completed,100% use case coverage; 54+ tests; >90% coverage; ports defined; no domain dependencies on infra; RBAC ai_review resource; HMAC lock tokens,4,ARTIFACT:packages/domain/src/ai/review/AIOutputReviewRepository.ts;ARTIFACT:packages/application/src/ports/repositories/AIOutputReviewRepositoryPort.ts;ARTIFACT:packages/application/src/usecases/ai-review/CreateReviewUseCase.ts;ARTIFACT:packages/application/src/usecases/ai-review/ClaimReviewUseCase.ts;ARTIFACT:packages/application/src/usecases/ai-review/ApproveReviewUseCase.ts;ARTIFACT:packages/application/src/usecases/ai-review/RejectReviewUseCase.ts;ARTIFACT:packages/application/src/usecases/ai-review/ReleaseReviewUseCase.ts;ARTIFACT:packages/application/src/usecases/ai-review/EscalateReviewUseCase.ts;ARTIFACT:packages/application/src/usecases/ai-review/index.ts;SPEC:.specify/sprints/sprint-4/specifications/IFC-177-spec.md;PLAN:.specify/sprints/sprint-4/planning/IFC-177-plan.md;EVIDENCE:.specify/sprints/sprint-4/attestations/IFC-177/attestation.json,VALIDATE:pnpm test;AUDIT:code-review,120/240/480,2026-02-03,2026-02-17,100,"IFC-176:FS,IFC-128:FS",
IFC-178,AI Foundation,AI Output Review - Database Schema (Prisma models),Backend Dev (STOA-Quality),IFC-128,FILE:packages/domain/src/ai/review/index.ts;FILE:packages/db/prisma/schema.prisma;FILE:docs/architecture/adr/ADR-004-multi-tenancy.md,AIOutputReview table with tenant isolation; ReviewAuditLog table; indexes for status/tenant queries; migration script; verified by: pnpm db:migrate,Completed,Schema matches domain model; RLS policies applied; migration runs cleanly,4,ARTIFACT:packages/db/prisma/schema.prisma;ARTIFACT:infra/supabase/migrations/20260204000000_ai_output_review_rls.sql;SPEC:.specify/sprints/sprint-4/specifications/IFC-178-spec.md;PLAN:.specify/sprints/sprint-4/planning/IFC-178-plan.md;EVIDENCE:.specify/sprints/sprint-4/attestations/IFC-178/attestation.json,VALIDATE:pnpm db:migrate;AUDIT:code-review,90/180/360,2026-02-03,2026-02-14,100,IFC-128:FS,
IFC-179,AI Foundation,AI Output Review - Adapters Layer (repository implementation),Backend Dev (STOA-Quality),"IFC-177,IFC-178",FILE:packages/application/src/ports/repositories/AIOutputReviewRepositoryPort.ts;FILE:packages/db/prisma/schema.prisma;FILE:docs/architecture/hex-boundaries.md,PrismaAIOutputReviewRepository implements port; CRUD operations; query filters for status/tenant/SLA; event publishing; verified by: pnpm test,Completed,Repository implements all port methods; queries optimized; tests passing,5,ARTIFACT:packages/adapters/src/repositories/PrismaAIOutputReviewRepository.ts;ARTIFACT:packages/adapters/src/repositories/__tests__/PrismaAIOutputReviewRepository.test.ts;SPEC:.specify/sprints/sprint-5/specifications/IFC-179-spec.md;PLAN:.specify/sprints/sprint-5/planning/IFC-179-plan.md;EVIDENCE:.specify/sprints/sprint-5/attestations/IFC-179/attestation.json,VALIDATE:pnpm test;VALIDATE:pnpm test:integration,120/240/480,2026-02-04,2026-02-05,100,"IFC-177:FS,IFC-178:FS",
IFC-180,AI Foundation,AI Output Review - tRPC Router (API endpoints),Backend Dev (STOA-Quality),IFC-179,FILE:packages/adapters/src/repositories/PrismaAIOutputReviewRepository.ts;FILE:packages/application/src/usecases/ai-review/index.ts;FILE:apps/api/src/trpc.ts,"review.list, review.get, review.claim, review.approve, review.reject, review.escalate, review.stats endpoints; authentication/authorization; verified by: pnpm test",Completed,All endpoints working; auth enforced; response <200ms,5,ARTIFACT:apps/api/src/modules/ai-review/ai-review.router.ts;ARTIFACT:apps/api/src/modules/ai-review/__tests__/ai-review.router.test.ts;SPEC:.specify/sprints/sprint-5/specifications/IFC-180-spec.md;PLAN:.specify/sprints/sprint-5/planning/IFC-180-plan.md;EVIDENCE:.specify/sprints/sprint-5/attestations/IFC-180/attestation.json,VALIDATE:pnpm test;AUDIT:code-review,90/180/360,2026-02-05,2026-02-06,100,IFC-179:FS,
IFC-181,AI Foundation,AI Output Review - Frontend UI (review queue page),Frontend Dev (STOA-Quality),"IFC-180,IFC-149",FILE:apps/api/src/modules/ai-review/ai-review.router.ts;FILE:apps/web/src/app/agent-approvals/page.tsx;FILE:docs/design/UI_DEVELOPMENT_PROMPT.md;FILE:docs/company/brand/DESIGN_SYSTEM_LLM_INDEX.md;DESIGN:docs/design/mockups/ai-review-queue.html;DESIGN:docs/design/mockups/ai-review-queue.png,Review queue page with filters (status/confidence/chain type); claim/approve/reject actions; confidence score visualization; SLA countdown; follows design system (AppHeader+AppSidebar pattern aligned 2026-02-03); Lighthouse >=90; verified by: pnpm test,Completed,Queue renders correctly; actions work; Lighthouse >=90; dark mode supported,6,ARTIFACT:apps/web/src/app/agent-approvals/ai-review/page.tsx;ARTIFACT:apps/web/src/app/agent-approvals/ai-review/[id]/page.tsx;ARTIFACT:apps/web/src/components/ai-review/ReviewQueue.tsx;ARTIFACT:apps/web/src/components/ai-review/ReviewCard.tsx;ARTIFACT:apps/web/src/components/ai-review/index.ts;ARTIFACT:apps/web/src/lib/ai-review/hooks.ts;ARTIFACT:apps/web/src/lib/shared/date-utils.ts;EVIDENCE:.specify/sprints/sprint-6/attestations/IFC-181/attestation.json,VALIDATE:pnpm test;GATE:lighthouse-gte-90,180/360/720,2026-02-07,2026-03-15,100,"IFC-180:FS,IFC-149:FS",
IFC-182,Infrastructure,"Home Page tRPC Router - Welcome summary activity feed AI insights pinned items daily goals REOPENED 16/11/2026 (self-claimed done, DoD partly met): home.router.ts has 7 of the 8 listed procedures; getActivityFeed is absent.",pg-208,"IFC-003,IFC-089",FILE:apps/api/src/router.ts;FILE:apps/api/src/trpc.ts;FILE:packages/validators/src/index.ts;FILE:docs/design/integration-backlog.md;FILE:docs/planning/prd-home-page.md;FILE:docs/specs/HOME-PAGE-SPEC.md,"home.getWelcomeSummary, home.getAIInsights, home.getActivityFeed, home.getDailyGoal, home.getPinnedItems, home.pinItem, home.unpinItem, home.reorderPinnedItems; verified by: pnpm test",Backlog,All endpoints <200ms; test coverage >=90%; wired to router.ts,42,ARTIFACT:apps/api/src/modules/home/home.router.ts;ARTIFACT:packages/validators/src/home.ts;ARTIFACT:apps/api/src/modules/home/__tests__/home.router.test.ts;ARTIFACT:docs/planning/prd-home-page.md;SPEC:docs/specs/HOME-PAGE-SPEC.md;EVIDENCE:.specify/sprints/sprint-13/attestations/IFC-182/attestation.json,VALIDATE:pnpm test;GATE:coverage-gte-90,120/240/480,2027-07-25,2027-08-07,50,"IFC-003:FS,IFC-089:FS",
IFC-183,Infrastructure,Notifications tRPC Router - List mark read preferences real-time subscription,Backend Dev (STOA-Domain),"IFC-003,IFC-157",FILE:apps/api/src/router.ts;FILE:apps/api/src/trpc.ts;FILE:packages/validators/src/index.ts;FILE:docs/design/integration-backlog.md,"notifications.list, notifications.getUnreadCount, notifications.markAsRead, notifications.markAllAsRead, notifications.delete, notifications.getPreferences, notifications.updatePreferences, notifications.onNew subscription; verified by: pnpm test",Completed,All endpoints <200ms; real-time latency <100ms; test coverage >=90%,13,ARTIFACT:apps/api/src/modules/notifications/notifications.router.ts;ARTIFACT:packages/validators/src/notifications.ts;ARTIFACT:apps/api/src/modules/notifications/__tests__/notifications.router.test.ts;EVIDENCE:.specify/sprints/sprint-13/attestations/IFC-183/attestation.json,VALIDATE:pnpm test;GATE:coverage-gte-90,120/240/480,2026-02-17,2026-02-18,100,"IFC-003:FS,IFC-157:FS",
PG-129,Core CRM,Authenticated Home Page - Welcome summary activity feed AI insights pinned items goals,CRM FE+BE (STOA-Foundation),"IFC-182,IFC-069,IFC-095",IMPLEMENTS:FLOW-025;IMPLEMENTS:FLOW-047;FILE:docs/architecture/adr/ADR-027-authenticated-home-composition.md;FILE:docs/design/integration-backlog.md;FILE:apps/api/src/modules/home/home.router.ts;FILE:packages/validators/src/home.ts;FILE:apps/api/src/modules/intelligence/intelligence.router.ts;FILE:docs/company/brand/visual-identity.md;FILE:docs/company/brand/style-guide.md;FILE:docs/planning/prd-home-page.md;FILE:docs/specs/HOME-PAGE-SPEC.md,"Response <500ms, Lighthouse >=90, real-time feed working; InsightsSection, FeedSection, GoalSection, PinnedSection, QuickActions components; verified by: pnpm test",Completed,Page loads <500ms; activity feed real-time via WebSocket; AI insights displayed; pins draggable,14,ARTIFACT:apps/web/src/app/(public)/signed-in-home/page.tsx;ARTIFACT:apps/web/src/components/home/AuthenticatedHomePage.tsx;ARTIFACT:apps/web/src/components/home/PublicHomePage.tsx;ARTIFACT:apps/web/src/components/home/HomePageContent.tsx;ARTIFACT:docs/planning/prd-home-page.md;SPEC:docs/specs/HOME-PAGE-SPEC.md;EVIDENCE:.specify/sprints/sprint-14/attestations/PG-129/attestation.json,VALIDATE:pnpm test;GATE:lighthouse-gte-90,180/360/720,2026-06-28,2026-07-08,100,"IFC-182:FS,IFC-069:FS,IFC-095:FS",
PG-130,Core CRM,Notifications Inbox Page - List mark read real-time updates filters,Platform FE+BE (STOA-Foundation),IFC-183,IMPLEMENTS:FLOW-019;FILE:docs/design/integration-backlog.md;FILE:apps/api/src/modules/notifications/notifications.router.ts;FILE:docs/company/brand/visual-identity.md;FILE:docs/company/brand/style-guide.md,"Response <300ms, Lighthouse >=90, real-time notifications via WebSocket; NotificationList, NotificationItem, NotificationFilters, NotificationBell components; infinite scroll pagination; verified by: pnpm test",Completed,Notifications load <300ms; real-time via WebSocket; mark all as read works; filter by type,14,ARTIFACT:apps/web/src/app/notifications/page.tsx;ARTIFACT:apps/web/src/components/notifications/NotificationList.tsx;ARTIFACT:apps/web/src/components/notifications/NotificationItem.tsx;ARTIFACT:apps/web/src/components/notifications/NotificationFilters.tsx;ARTIFACT:apps/web/src/components/notifications/NotificationBell.tsx;EVIDENCE:.specify/sprints/sprint-14/attestations/PG-130/attestation.json,VALIDATE:pnpm test;GATE:lighthouse-gte-90,120/240/480,2026-06-30,2026-02-23,100,IFC-183:FS,
PG-131,Core CRM,Deal Forecast UI Pages - Probability gauge risk factors recommendations history,CRM FE+BE (STOA-Intelligence),"IFC-092,IFC-095",IMPLEMENTS:FLOW-009;FILE:docs/design/integration-backlog.md;FILE:apps/api/src/modules/intelligence/intelligence.router.ts;FILE:apps/api/src/modules/opportunity/opportunity.router.ts;FILE:docs/company/brand/visual-identity.md;FILE:docs/company/brand/style-guide.md,"Response <500ms, Lighthouse >=90; ForecastHeader, ProbabilityGauge, RiskFactorsCard, RecommendedActions, ForecastHistory, ConfidenceIndicator components; verified by: pnpm test",Completed,Forecast loads <500ms; probability gauge accurate; recommendations actionable; history chart shows 30 days,14,ARTIFACT:apps/web/src/app/deals/[id]/forecast/page.tsx;ARTIFACT:apps/web/src/app/deals/forecast/page.tsx;ARTIFACT:apps/web/src/components/deals/forecast/ForecastHeader.tsx;ARTIFACT:apps/web/src/components/deals/forecast/ProbabilityGauge.tsx;ARTIFACT:apps/web/src/components/deals/forecast/RiskFactorsCard.tsx;ARTIFACT:apps/web/src/components/deals/forecast/RecommendedActions.tsx;ARTIFACT:apps/web/src/components/deals/forecast/ForecastHistory.tsx;ARTIFACT:apps/web/src/components/deals/forecast/ConfidenceIndicator.tsx;EVIDENCE:.specify/sprints/sprint-14/attestations/PG-131/attestation.json,VALIDATE:pnpm test;GATE:lighthouse-gte-90,180/360/720,2026-02-22,2026-02-23,100,"IFC-092:FS,IFC-095:FS",
PG-132,Automation,Smart Lead Routing UI - Rules configuration assignment dashboard SLA monitoring,Frontend Dev + Sales Ops (STOA-Domain),IFC-030,FILE:docs/company/brand/visual-identity.md;FILE:docs/company/brand/style-guide.md;FILE:docs/design/UI_DEVELOPMENT_PROMPT.md;FILE:docs/company/brand/DESIGN_SYSTEM_LLM_INDEX.md,"Response <500ms, Lighthouse >=90; RoutingRulesEditor, AssignmentDashboard, SLAMonitor, LeadQueueView, AgentWorkload components; drag-drop rule priority; real-time assignment view; verified by: pnpm test",Completed,Rules editor intuitive; assignments visible in real-time; SLA breaches highlighted; Lighthouse >=90,18,ARTIFACT:apps/web/src/app/settings/routing/page.tsx;ARTIFACT:apps/web/src/components/routing/RoutingRulesEditor.tsx;ARTIFACT:apps/web/src/components/routing/AssignmentDashboard.tsx;ARTIFACT:apps/web/src/components/routing/SLAMonitor.tsx;ARTIFACT:apps/web/src/components/routing/LeadQueueView.tsx;ARTIFACT:apps/web/src/components/routing/AgentWorkload.tsx;EVIDENCE:.specify/sprints/sprint-18/attestations/PG-132/attestation.json,VALIDATE:pnpm test;GATE:lighthouse-gte-90,180/360/720,2026-08-23,2026-09-03,100,IFC-030:FS,
IFC-184,Core CRM,Contact tRPC Router - CRUD search relationship linking timeline integration,Backend Dev (STOA-Domain),"IFC-102,IFC-107,IFC-003",FILE:packages/domain/src/crm/contact/Contact.ts;FILE:packages/adapters/src/repositories/PrismaContactRepository.ts;FILE:apps/api/src/router.ts;FILE:docs/architecture/hex-boundaries.md,"contact.list, contact.get, contact.create, contact.update, contact.delete, contact.search, contact.linkToAccount, contact.linkToLead, contact.getTimeline endpoints; verified by: pnpm test",Completed,All endpoints <200ms; test coverage >=90%; wired to router.ts,4,ARTIFACT:apps/api/src/modules/contact/contact.router.ts;ARTIFACT:apps/api/src/modules/contact/__tests__/contact.router.test.ts;SPEC:.specify/sprints/sprint-4/specifications/IFC-184-spec.md;EVIDENCE:.specify/sprints/sprint-4/attestations/IFC-184/attestation.json,VALIDATE:pnpm test;GATE:coverage-gte-90,90/180/360,2026-02-04,2026-02-15,100,"IFC-102:FS,IFC-107:FS,IFC-003:FS",
IFC-185,Core CRM,Account tRPC Router - CRUD hierarchy contacts opportunities activity feed,Backend Dev (STOA-Domain),"IFC-103,IFC-107,IFC-003",FILE:packages/domain/src/crm/account/Account.ts;FILE:packages/adapters/src/repositories/PrismaAccountRepository.ts;FILE:apps/api/src/router.ts;FILE:docs/architecture/hex-boundaries.md,"account.list, account.get, account.create, account.update, account.delete, account.getContacts, account.getOpportunities, account.getHierarchy, account.getActivity endpoints; verified by: pnpm test",Completed,All endpoints <200ms; test coverage >=90%; wired to router.ts,4,ARTIFACT:apps/api/src/modules/account/account.router.ts;ARTIFACT:apps/api/src/modules/account/__tests__/account.router.test.ts;SPEC:.specify/sprints/sprint-4/specifications/IFC-185-spec.md;PLAN:.specify/sprints/sprint-4/planning/IFC-185-plan.md;EVIDENCE:.specify/sprints/sprint-4/attestations/IFC-185/attestation.json,VALIDATE:pnpm test;GATE:coverage-gte-90,90/180/360,2026-02-04,2026-02-15,100,"IFC-103:FS,IFC-107:FS,IFC-003:FS",
IFC-186,Core CRM,Deal/Opportunity tRPC Router - CRUD pipeline stages probability history products,Backend Dev (STOA-Domain),"IFC-104,IFC-107,IFC-003",FILE:packages/domain/src/crm/opportunity/Opportunity.ts;FILE:packages/adapters/src/repositories/PrismaOpportunityRepository.ts;FILE:apps/api/src/router.ts;FILE:docs/architecture/hex-boundaries.md,"deal.list, deal.get, deal.create, deal.update, deal.delete, deal.moveStage, deal.getHistory, deal.getProducts, deal.getPipeline, deal.getForecast endpoints; verified by: pnpm test",Completed,All endpoints <200ms; test coverage >=90%; pipeline view optimized,5,ARTIFACT:apps/api/src/modules/opportunity/opportunity.router.ts;ARTIFACT:apps/api/src/modules/opportunity/__tests__/opportunity.router.test.ts;SPEC:.specify/sprints/sprint-5/specifications/IFC-186-spec.md;PLAN:.specify/sprints/sprint-5/planning/IFC-186-plan.md;EVIDENCE:.specify/sprints/sprint-5/attestations/IFC-186/attestation.json,VALIDATE:pnpm test;GATE:coverage-gte-90,90/180/360,2026-02-05,2026-02-22,100,"IFC-104:FS,IFC-107:FS,IFC-003:FS",
IFC-187,Core CRM,Task tRPC Router - CRUD assignment scheduling reminders timeline integration,Backend Dev (STOA-Domain),"IFC-105,IFC-107,IFC-003",FILE:packages/domain/src/crm/task/Task.ts;FILE:packages/adapters/src/repositories/PrismaTaskRepository.ts;FILE:apps/api/src/router.ts;FILE:docs/architecture/hex-boundaries.md,"task.list, task.get, task.create, task.update, task.delete, task.assign, task.complete, task.reschedule, task.getReminders, task.getByEntity endpoints; verified by: pnpm test",Completed,All endpoints <200ms; test coverage >=90%; assignee notifications work,5,ARTIFACT:apps/api/src/modules/task/task.router.ts;ARTIFACT:apps/api/src/modules/task/__tests__/task.router.test.ts;EVIDENCE:.specify/sprints/sprint-5/attestations/IFC-187/attestation.json,VALIDATE:pnpm test;GATE:coverage-gte-90,90/180/360,2026-02-15,2026-02-22,100,"IFC-105:FS,IFC-107:FS,IFC-003:FS",
IFC-188,Core CRM,Ticket Domain Entity - Aggregate with SLA priority escalation categories customer linking,Backend Dev (STOA-Domain),"IFC-002,IFC-003",FILE:packages/domain/src/index.ts;FILE:packages/validators/src/index.ts;FILE:packages/domain/src/support/TicketConstants.ts;FILE:docs/architecture/hex-boundaries.md,"Ticket aggregate with TicketId VO, TicketStatus enum, TicketPriority enum, SLAStatus, Category, Assignee, Customer link; Zod validators; repository interface; verified by: pnpm test",Completed,Aggregate follows DDD patterns; validators derive from domain constants; tests passing,4,ARTIFACT:packages/domain/src/crm/ticket/Ticket.ts;ARTIFACT:packages/domain/src/crm/ticket/TicketId.ts;ARTIFACT:packages/domain/src/crm/ticket/TicketEvents.ts;ARTIFACT:packages/domain/src/crm/ticket/TicketRepository.ts;ARTIFACT:packages/domain/src/crm/ticket/index.ts;ARTIFACT:packages/validators/src/__tests__/ticket.test.ts;EVIDENCE:.specify/sprints/sprint-4/attestations/IFC-188/completion.json,VALIDATE:pnpm test;AUDIT:code-review,90/180/360,2026-02-04,2026-02-05,100,"IFC-002:FS,IFC-003:FS",
IFC-189,Core CRM,Ticket tRPC Router - CRUD SLA tracking escalation assignment customer portal,Backend Dev (STOA-Domain),"IFC-188,IFC-107,IFC-003",FILE:packages/domain/src/crm/ticket/Ticket.ts;FILE:packages/adapters/src/repositories/PrismaTicketRepository.ts;FILE:apps/api/src/router.ts;FILE:docs/architecture/hex-boundaries.md,"ticket.list, ticket.get, ticket.create, ticket.update, ticket.close, ticket.escalate, ticket.assign, ticket.getSLAStatus, ticket.getByCustomer endpoints; verified by: pnpm test",Completed,All endpoints <200ms; SLA calculations correct; escalation triggers work,5,ARTIFACT:apps/api/src/modules/ticket/ticket.router.ts;ARTIFACT:apps/api/src/modules/ticket/__tests__/ticket.router.test.ts;ARTIFACT:packages/adapters/src/repositories/PrismaTicketRepository.ts;EVIDENCE:.specify/sprints/sprint-5/attestations/IFC-189/attestation.json,VALIDATE:pnpm test;GATE:coverage-gte-90,120/240/480,2026-02-06,2026-02-07,100,"IFC-188:FS,IFC-107:FS,IFC-003:FS",
IFC-190,Analytics,Analytics tRPC Router - Sales metrics conversion funnels time series exports,Backend Dev (STOA-Intelligence),"ANALYTICS-001,IFC-003,IFC-200",FILE:docs/api/schemas/analytics-event-schema.json;FILE:apps/api/src/router.ts;FILE:docs/planning/prd-analytics-reporting.md;FILE:docs/architecture/adr/ADR-016-analytics-integrity.md,"analytics.getOverview, analytics.getSalesMetrics, analytics.getLeadMetrics, analytics.getConversionFunnel, analytics.getTimeSeriesData, analytics.exportReport endpoints; verified by: pnpm test; must query real database not mock data",Completed,All endpoints <500ms; data from real queries; test coverage >=90%; Stmts 100% Branch 100% Funcs 100% Lines 100%,14,ARTIFACT:apps/api/src/modules/analytics/analytics.router.ts;ARTIFACT:apps/api/src/modules/analytics/__tests__/analytics.router.test.ts;EVIDENCE:.specify/sprints/sprint-14/attestations/IFC-190/attestation.json,VALIDATE:pnpm test;GATE:coverage-gte-90;GATE:real-data-check,120/240/480,2026-07-01,2026-02-22,100,"ANALYTICS-001:FS,IFC-003:FS,IFC-200:FS",
PG-133,Core CRM,Contact List & Detail Pages - Search filters relationship view activity timeline,Frontend Dev (STOA-Domain),IFC-184,FILE:apps/api/src/modules/contact/contact.router.ts;FILE:docs/company/brand/visual-identity.md;FILE:docs/company/brand/style-guide.md;FILE:docs/design/UI_DEVELOPMENT_PROMPT.md;DESIGN:docs/design/mockups/contact-list.png,"Response <500ms, Lighthouse >=90; ContactList, ContactCard, ContactDetail, ContactForm, RelationshipGraph, ActivityTimeline components; verified by: pnpm test",Completed,List loads <500ms; search works; relationships visualized; Lighthouse >=90,5,ARTIFACT:apps/web/src/app/contacts/(list)/page.tsx;ARTIFACT:apps/web/src/app/contacts/[id]/page.tsx;ARTIFACT:apps/web/src/components/contacts/ContactList.tsx;ARTIFACT:apps/web/src/components/contacts/ContactCard.tsx;ARTIFACT:apps/web/src/app/contacts/[id]/page.tsx;ARTIFACT:apps/web/src/components/contacts/ContactForm.tsx;EVIDENCE:.specify/sprints/sprint-5/attestations/PG-133/attestation.json,VALIDATE:pnpm test;GATE:lighthouse-gte-90,180/360/720,2026-02-22,2026-03-03,100,IFC-184:FS,
PG-134,Core CRM,Account List & Detail Pages - Hierarchy view contacts opportunities revenue charts,Frontend Dev (STOA-Domain),IFC-185,IMPLEMENTS:FLOW-046;FILE:docs/planning/prd-account-management.md;FILE:docs/architecture/adr/ADR-026-account-hierarchy.md;FILE:apps/api/src/modules/account/account.router.ts;FILE:docs/company/brand/visual-identity.md;FILE:docs/company/brand/style-guide.md;FILE:docs/design/UI_DEVELOPMENT_PROMPT.md;DESIGN:docs/design/mockups/account-list.png,"Response <500ms, Lighthouse >=90; AccountList, AccountCard, AccountDetail, AccountHierarchy, RevenueChart, ContactsList, OpportunitiesList components; verified by: pnpm test",Completed,List loads <500ms; hierarchy tree works; revenue chart accurate; Lighthouse >=90,5,ARTIFACT:apps/web/src/app/accounts/(list)/page.tsx;ARTIFACT:apps/web/src/app/accounts/(list)/layout.tsx;ARTIFACT:apps/web/src/app/accounts/[id]/page.tsx;ARTIFACT:apps/web/src/components/accounts/AccountCard.tsx;ARTIFACT:apps/web/src/components/accounts/AccountDetail.tsx;ARTIFACT:apps/web/src/components/accounts/AccountHierarchy.tsx;ARTIFACT:apps/web/src/components/accounts/RevenueChart.tsx;ARTIFACT:apps/web/src/components/accounts/AccountContactsList.tsx;ARTIFACT:apps/web/src/components/accounts/AccountOpportunitiesList.tsx;EVIDENCE:.specify/sprints/sprint-5/attestations/PG-134/attestation.json,VALIDATE:pnpm test;GATE:lighthouse-gte-90,180/360/720,2026-02-22,2026-03-03,100,IFC-185:FS,
PG-135,Core CRM,Deal Pipeline Page - Kanban board drag-drop stages value totals filtering,Frontend Dev (STOA-Domain),IFC-186,FILE:apps/api/src/modules/opportunity/opportunity.router.ts;FILE:docs/company/brand/visual-identity.md;FILE:docs/company/brand/style-guide.md;FILE:docs/design/UI_DEVELOPMENT_PROMPT.md;DESIGN:docs/design/mockups/deal-pipeline.png,"Response <500ms, Lighthouse >=90; PipelineBoard, StageColumn, DealCard, DealFilters, ValueSummary, DealQuickView components; drag-drop stage changes; verified by: pnpm test",Completed,Pipeline loads <500ms; drag-drop works; value totals accurate; Lighthouse >=90,6,ARTIFACT:apps/web/src/app/deals/(list)/page.tsx;ARTIFACT:apps/web/src/components/deals/PipelineBoard.tsx;ARTIFACT:apps/web/src/components/deals/StageColumn.tsx;ARTIFACT:apps/web/src/components/deals/DealCard.tsx;ARTIFACT:apps/web/src/components/deals/DealFilters.tsx;ARTIFACT:apps/web/src/components/deals/ValueSummary.tsx;EVIDENCE:.specify/sprints/sprint-6/attestations/PG-135/attestation.json,VALIDATE:pnpm test;GATE:lighthouse-gte-90,180/360/720,2026-02-09,2026-02-15,100,IFC-186:FS,
PG-136,Core CRM,"Task Management Page - List calendar view assignments reminders entity linking REOPENED 16/11/2026 (self-claimed done, DoD partly met): DoD 'TaskCard ... TaskCalendar ... calendar and list views': TaskCard has no importer and TaskCalendar is not rendered, so /tasks has no calendar view.",ifc-ui-2,IFC-187,FILE:apps/api/src/modules/task/task.router.ts;FILE:docs/company/brand/visual-identity.md;FILE:docs/company/brand/style-guide.md;FILE:docs/design/UI_DEVELOPMENT_PROMPT.md;DESIGN:docs/design/mockups/task-list.png,"Response <500ms, Lighthouse >=90; TaskList, TaskCard, TaskCalendar, TaskDetail, TaskForm, ReminderConfig components; calendar and list views; verified by: pnpm test",Backlog,List/calendar loads <500ms; reminders work; entity links navigable; Lighthouse >=90,30,ARTIFACT:apps/web/src/app/tasks/(list)/page.tsx;ARTIFACT:apps/web/src/app/tasks/(list)/layout.tsx;ARTIFACT:apps/web/src/app/tasks/[id]/page.tsx;ARTIFACT:apps/web/src/components/tasks/TaskList.tsx;ARTIFACT:apps/web/src/components/tasks/TaskCard.tsx;ARTIFACT:apps/web/src/components/tasks/TaskCalendar.tsx;ARTIFACT:apps/web/src/components/tasks/TaskForm.tsx;ARTIFACT:apps/web/src/components/tasks/TaskDetail.tsx;ARTIFACT:apps/web/src/components/tasks/ReminderConfig.tsx;ARTIFACT:apps/web/src/components/sidebar/configs/tasks.ts;EVIDENCE:.specify/sprints/sprint-6/attestations/PG-136/attestation.json,VALIDATE:pnpm test;GATE:lighthouse-gte-90,180/360/720,2027-02-07,2027-02-20,50,IFC-187:FS,
PG-137,Core CRM,Ticket Management Page - List detail SLA indicators escalation customer portal view,Frontend Dev (STOA-Domain),IFC-189,FILE:apps/api/src/modules/ticket/ticket.router.ts;FILE:docs/company/brand/visual-identity.md;FILE:docs/company/brand/style-guide.md;FILE:docs/design/UI_DEVELOPMENT_PROMPT.md;DESIGN:docs/design/mockups/ticket-list.png,"Response <500ms, Lighthouse >=90; TicketList, TicketCard, TicketDetail, SLAIndicator, EscalationAlert, TicketForm, CustomerPortalView components; verified by: pnpm test",Completed,List loads <500ms; SLA indicators accurate; escalation alerts visible; Lighthouse >=90,6,ARTIFACT:apps/web/src/app/tickets/(list)/page.tsx;ARTIFACT:apps/web/src/app/tickets/[id]/page.tsx;ARTIFACT:apps/web/src/components/tickets/TicketList.tsx;ARTIFACT:apps/web/src/components/tickets/TicketCard.tsx;ARTIFACT:apps/web/src/components/tickets/TicketDetail.tsx;ARTIFACT:apps/web/src/components/tickets/SLAIndicator.tsx;EVIDENCE:.specify/sprints/sprint-6/attestations/PG-137/attestation.json,VALIDATE:pnpm test;GATE:lighthouse-gte-90,180/360/720,2026-02-09,2026-02-11,100,IFC-189:FS,
PG-138,Legal,Case List & Detail Pages - Party management deadline tracking document links timeline,Frontend Dev (STOA-Domain),IFC-136,FILE:apps/api/src/modules/legal/cases.router.ts;FILE:docs/company/brand/visual-identity.md;FILE:docs/company/brand/style-guide.md;FILE:docs/design/UI_DEVELOPMENT_PROMPT.md;DESIGN:docs/design/mockups/case-list.png,"Response <500ms, Lighthouse >=90; CaseList, CaseCard, CaseDetail, PartyManager, DeadlineTracker, DocumentLinks, CaseTimeline components; verified by: pnpm test",Completed,List loads <500ms; parties editable; deadlines accurate; documents linked; Lighthouse >=90,7,ARTIFACT:apps/web/src/app/cases/(list)/page.tsx;ARTIFACT:apps/web/src/app/cases/[id]/page.tsx;ARTIFACT:apps/web/src/components/cases/CaseList.tsx;ARTIFACT:apps/web/src/components/cases/CaseDetail.tsx;ARTIFACT:apps/web/src/components/cases/PartyManager.tsx;ARTIFACT:apps/web/src/components/cases/DeadlineTracker.tsx;EVIDENCE:.specify/sprints/sprint-7/attestations/PG-138/attestation.json,VALIDATE:pnpm test;GATE:lighthouse-gte-90,180/360/720,2026-03-15,2026-02-15,100,IFC-136:FS,
PG-139,Legal,Appointment Scheduling Page - Calendar view conflict detection case linking reminders,Frontend Dev (STOA-Domain),IFC-137,FILE:apps/api/src/modules/legal/appointments.router.ts;FILE:docs/company/brand/visual-identity.md;FILE:docs/company/brand/style-guide.md;FILE:docs/design/UI_DEVELOPMENT_PROMPT.md;DESIGN:docs/design/mockups/appointment-calendar.png,"Response <500ms, Lighthouse >=90; AppointmentCalendar, AppointmentForm, ConflictWarning, CaseLinkSelector, ReminderConfig, RecurrenceEditor components; verified by: pnpm test",Completed,Calendar loads <500ms; conflicts highlighted; case links work; reminders configurable; Lighthouse >=90,7,ARTIFACT:apps/web/src/app/calendar/(list)/page.tsx;ARTIFACT:apps/web/src/app/appointments/[id]/page.tsx;ARTIFACT:apps/web/src/components/appointments/AppointmentCalendar.tsx;ARTIFACT:apps/web/src/components/appointments/AppointmentForm.tsx;ARTIFACT:apps/web/src/components/appointments/ConflictWarning.tsx;ARTIFACT:apps/web/src/components/appointments/RecurrenceEditor.tsx;EVIDENCE:.specify/sprints/sprint-7/attestations/PG-139/attestation.json,VALIDATE:pnpm test;GATE:lighthouse-gte-90,180/360/720,2026-03-15,2026-03-25,100,IFC-137:FS,
PG-140,Legal,Document Manager Page - Upload viewer version history ACL management search,Frontend Dev (STOA-Domain),"IFC-152,IFC-153",FILE:apps/api/src/modules/legal/documents.router.ts;FILE:docs/company/brand/visual-identity.md;FILE:docs/company/brand/style-guide.md;FILE:docs/design/UI_DEVELOPMENT_PROMPT.md;DESIGN:docs/design/mockups/document-manager.png,"Response <500ms, Lighthouse >=90; DocumentList, DocumentUpload, DocumentViewer, VersionHistory, ACLManager, DocumentSearch components; verified by: pnpm test",Completed,List loads <500ms; upload works; viewer renders PDFs; versions navigable; search fast; Lighthouse >=90,13,ARTIFACT:apps/web/src/app/documents/(list)/page.tsx;ARTIFACT:apps/web/src/app/documents/[id]/page.tsx;ARTIFACT:apps/web/src/components/documents/DocumentList.tsx;ARTIFACT:apps/web/src/components/documents/DocumentUpload.tsx;ARTIFACT:apps/web/src/components/documents/DocumentViewer.tsx;ARTIFACT:apps/web/src/components/documents/VersionHistory.tsx;EVIDENCE:.specify/sprints/sprint-13/attestations/PG-140/attestation.json,VALIDATE:pnpm test;GATE:lighthouse-gte-90,180/360/720,2026-02-19,2026-02-19,100,"IFC-152:FS,IFC-153:FS",
PG-141,Communications,Email Compose & History Page - Thread view compose attachments templates,Frontend Dev (STOA-Domain),IFC-144,FILE:apps/api/src/modules/email/inbound.router.ts;FILE:docs/company/brand/visual-identity.md;FILE:docs/company/brand/style-guide.md;FILE:docs/design/UI_DEVELOPMENT_PROMPT.md;DESIGN:docs/design/mockups/email-compose.png,"Response <500ms, Lighthouse >=90; EmailList, EmailThread, EmailCompose, AttachmentManager, TemplateSelector, RecipientPicker components; verified by: pnpm test",Completed,List loads <500ms; compose works; attachments upload; templates apply; Lighthouse >=90,11,ARTIFACT:apps/web/src/app/email/page.tsx;ARTIFACT:apps/web/src/app/email/[id]/page.tsx;ARTIFACT:apps/web/src/components/email/EmailList.tsx;ARTIFACT:apps/web/src/components/email/EmailThread.tsx;ARTIFACT:apps/web/src/components/email/EmailCompose.tsx;ARTIFACT:apps/web/src/components/email/AttachmentManager.tsx;EVIDENCE:.specify/sprints/sprint-11/attestations/PG-141/attestation.json,VALIDATE:pnpm test;GATE:lighthouse-gte-90,180/360/720,2026-04-01,2026-04-12,100,IFC-144:FS,
PG-142,AI Intelligence,Sentiment Analysis Dashboard at /agent-approvals/sentiment - Timeline badges trend visualization email sentiment preview,Frontend Dev (STOA-Intelligence),"IFC-039,IFC-181",FILE:apps/ai-worker/src/chains/sentiment.chain.ts;FILE:apps/web/src/components/sidebar/configs/agent-approvals.ts;FILE:docs/design/UI_DEVELOPMENT_PROMPT.md,Page renders at /agent-approvals/sentiment; SentimentDashboard with timeline badges trend charts emotion indicators urgency labels topic tags; reuses SearchFilterBar; Lighthouse >=90; verified by: pnpm test,Completed,Page loads <500ms; badges render correctly; trends accurate; emotion detection visible; Lighthouse >=90; test coverage >=90%,7,ARTIFACT:apps/web/src/app/agent-approvals/sentiment/page.tsx;ARTIFACT:apps/web/src/components/ai-intelligence/SentimentDashboard.tsx;ARTIFACT:apps/web/src/components/ai-intelligence/SentimentTrend.tsx;ARTIFACT:apps/web/src/components/ai-intelligence/__tests__/SentimentDashboard.test.tsx;EVIDENCE:.specify/sprints/sprint-7/attestations/PG-142/attestation.json,VALIDATE:pnpm test;GATE:lighthouse-gte-90,120/240/480,,,100,"IFC-039:FS,IFC-181:FS",
PG-143,AI Intelligence,Churn Risk Dashboard at /agent-approvals/churn-risk - Health scores risk indicators intervention triggers trend charts,Frontend Dev (STOA-Intelligence),"IFC-095,IFC-181",FILE:apps/ai-worker/src/chains/churn-risk.chain.ts;FILE:apps/web/src/components/sidebar/configs/agent-approvals.ts;FILE:docs/design/UI_DEVELOPMENT_PROMPT.md;DESIGN:docs/design/mockups/churn-dashboard.png,Page renders at /agent-approvals/churn-risk; ChurnDashboard with HealthScoreGauge RiskIndicators InterventionAlerts ChurnTrendChart AtRiskCustomerList; Lighthouse >=90; verified by: pnpm test,Completed,Dashboard loads <500ms; health scores accurate; interventions actionable; trends visible; Lighthouse >=90; test coverage >=90%,7,ARTIFACT:apps/web/src/app/agent-approvals/churn-risk/page.tsx;ARTIFACT:apps/web/src/components/ai-intelligence/ChurnDashboard.tsx;ARTIFACT:apps/web/src/components/ai-intelligence/HealthScoreGauge.tsx;ARTIFACT:apps/web/src/components/ai-intelligence/RiskIndicators.tsx;ARTIFACT:apps/web/src/components/ai-intelligence/ChurnTrendChart.tsx;ARTIFACT:apps/web/src/components/ai-intelligence/__tests__/ChurnDashboard.test.tsx;EVIDENCE:.specify/sprints/sprint-7/attestations/PG-143/attestation.json,VALIDATE:pnpm test;GATE:lighthouse-gte-90,180/360/720,,,100,"IFC-095:FS,IFC-181:FS",
PG-144,AI Intelligence,AI Search (RAG) Page at /agent-approvals/ai-search - Universal search bar AI-powered results citations source highlighting,Frontend Dev (STOA-Intelligence),"IFC-156,IFC-155,IFC-181",FILE:apps/ai-worker/src/chains/rag-context.chain.ts;FILE:apps/ai-worker/src/services/retrieval-service.ts;FILE:apps/web/src/components/sidebar/configs/agent-approvals.ts;FILE:docs/design/UI_DEVELOPMENT_PROMPT.md,Page renders at /agent-approvals/ai-search; GlobalSearchBar with AI-powered results CitationDisplay SourceHighlight SearchFilters RelevanceScore; response <1s; Lighthouse >=90; verified by: pnpm test,Completed,Search <1s; AI results accurate; citations linked; sources highlighted; Lighthouse >=90; test coverage >=90%,7,ARTIFACT:apps/web/src/app/agent-approvals/ai-search/page.tsx;ARTIFACT:apps/web/src/components/ai-intelligence/AISearchPage.tsx;ARTIFACT:apps/web/src/components/ai-intelligence/CitationDisplay.tsx;ARTIFACT:apps/web/src/components/ai-intelligence/SourceHighlight.tsx;ARTIFACT:apps/web/src/components/ai-intelligence/__tests__/AISearchPage.test.tsx;EVIDENCE:.specify/sprints/sprint-7/attestations/PG-144/attestation.json,VALIDATE:pnpm test;GATE:lighthouse-gte-90,180/360/720,2026-02-16,2026-02-16,100,"IFC-156:FS,IFC-155:FS,IFC-181:FS",
PG-145,AI Intelligence,Next Best Action Dashboard - NBA recommendations deal insights action cards success metrics Cross-entity scope: refine NextBestAction impact scoring from coarse 3-tier (HIGH/MEDIUM/LOW) to multi-factor model incorporating engagement score sentiment trend and activity recency. Apply refined scoring to NextBestActionCard on Lead and Contact detail pages.,ifc-ui-2,IFC-095,FILE:apps/api/src/modules/intelligence/intelligence.router.ts;FILE:docs/company/brand/visual-identity.md;FILE:docs/company/brand/style-guide.md;FILE:docs/design/UI_DEVELOPMENT_PROMPT.md,"Response <500ms, Lighthouse >=90; NBADashboard, RecommendationCard, ActionPriority, SuccessMetrics, DealInsights, NBATimeline components; verified by: pnpm test; Impact scoring uses multi-factor model; entity detail page NextBestActionCards updated with refined scoring",Backlog,Dashboard loads <500ms; recommendations actionable; deal insights accurate; success metrics tracked; Lighthouse >=90,53,ARTIFACT:apps/web/src/app/analytics/nba/page.tsx;ARTIFACT:apps/web/src/components/nba/NBADashboard.tsx;ARTIFACT:apps/web/src/components/nba/RecommendationCard.tsx;ARTIFACT:apps/web/src/components/nba/ActionPriority.tsx;ARTIFACT:apps/web/src/components/nba/SuccessMetrics.tsx;ARTIFACT:apps/web/src/components/nba/DealInsights.tsx;EVIDENCE:.specify/sprints/sprint-26/attestations/PG-145/context_ack.json,VALIDATE:pnpm test;GATE:lighthouse-gte-90,180/360/720,2027-12-26,2028-01-08,0,IFC-095:FS,
PG-146,AI Intelligence,Drift Detection Dashboard at /agent-approvals/drift - Model performance drift alerts cost tracking error rates,Frontend Dev (STOA-Intelligence),"IFC-117,IFC-197",FILE:apps/ai-worker/src/monitoring/drift-detector.ts;FILE:apps/ai-worker/src/monitoring/index.ts;FILE:apps/web/src/components/sidebar/configs/agent-approvals.ts;FILE:docs/design/UI_DEVELOPMENT_PROMPT.md,Page renders at /agent-approvals/drift; DriftDashboard with ModelPerformanceChart DriftAlerts CostTracker ErrorRateGauge; real-time drift status; Lighthouse >=90; verified by: pnpm test,Completed,Dashboard loads <500ms; drift alerts working; cost tracking accurate; error rates visible; Lighthouse >=90; test coverage >=90%,8,ARTIFACT:apps/web/src/app/agent-approvals/drift/page.tsx;ARTIFACT:apps/web/src/components/ai-monitoring/DriftDashboard.tsx;ARTIFACT:apps/web/src/components/ai-monitoring/DriftAlerts.tsx;ARTIFACT:apps/web/src/components/ai-monitoring/ModelPerformanceChart.tsx;ARTIFACT:apps/web/src/components/ai-monitoring/__tests__/DriftDashboard.test.tsx;EVIDENCE:.specify/sprints/sprint-8/attestations/PG-146/attestation.json,VALIDATE:pnpm test;GATE:lighthouse-gte-90,180/360/720,2026-02-16,2026-02-18,100,"IFC-117:FS,IFC-197:FS",
PG-147,Platform,Workflow List & Status UI - Active workflows execution status step visualization logs,ifc-ui-2,"IFC-028,IFC-141",FILE:apps/api/src/modules/workflow/workflow.router.ts;FILE:docs/company/brand/visual-identity.md;FILE:docs/company/brand/style-guide.md;FILE:docs/design/UI_DEVELOPMENT_PROMPT.md,"Response <500ms, Lighthouse >=90; WorkflowList, WorkflowDetail, StepVisualization, ExecutionLogs, StatusBadges, WorkflowTriggers components; verified by: pnpm test",Backlog,List loads <500ms; steps visualized; execution logs visible; status updates real-time; Lighthouse >=90,58,ARTIFACT:apps/web/src/app/workflows/page.tsx;ARTIFACT:apps/web/src/app/workflows/[id]/page.tsx;ARTIFACT:apps/web/src/components/workflows/WorkflowList.tsx;ARTIFACT:apps/web/src/components/workflows/WorkflowDetail.tsx;ARTIFACT:apps/web/src/components/workflows/StepVisualization.tsx;ARTIFACT:apps/web/src/components/workflows/ExecutionLogs.tsx;EVIDENCE:.specify/sprints/sprint-28/attestations/PG-147/context_ack.json,VALIDATE:pnpm test;GATE:lighthouse-gte-90,180/360/720,2028-03-05,2028-03-18,0,"IFC-028:FS,IFC-141:FS",
IFC-191,Platform,User Timezone Support - Add timezone field to User model with preference UI and timezone-aware greeting,Backend Dev (STOA-Domain),IFC-182,FILE:packages/db/prisma/schema.prisma;FILE:apps/api/src/modules/home/home.router.ts;FILE:apps/web/src/app/settings/account/page.tsx,User.timezone field added to Prisma schema; migration created; home.getWelcomeSummary greeting uses user timezone via Intl.DateTimeFormat; TimezoneSelector on /settings/account with tRPC persistence; fallback chain: user timezone → UTC; 74 tests passing; user router 100% coverage,Completed,Greeting correct for all timezones; migration reversible; settings UI works; test coverage >=90%,15,ARTIFACT:packages/db/prisma/migrations/*_add_user_timezone/migration.sql;ARTIFACT:apps/web/src/components/settings/TimezoneSelector.tsx;EVIDENCE:.specify/sprints/sprint-15/attestations/IFC-191/attestation.json;SPEC:.specify/sprints/sprint-15/specifications/IFC-191-spec.md;PLAN:.specify/sprints/sprint-15/planning/IFC-191-plan.md,VALIDATE:pnpm test;GATE:coverage-gte-90,60/120/240,2026-02-25,2026-02-25,100,IFC-182:FS,
IFC-192,Core CRM,Contact Activity Tracking - Add lastContactedAt field to Contact model with auto-update on interactions,Backend Dev (STOA-Domain),"IFC-182,IFC-184",FILE:packages/db/prisma/schema.prisma;FILE:packages/domain/src/crm/contact/Contact.ts;FILE:apps/api/src/modules/contact/contact.router.ts,Contact.lastContactedAt field added to Prisma schema; migration applied; field auto-updated on call/email/meeting events via domain event handler; home.getAIInsights generates stale contact warnings (30+ days no contact with open opportunities); verified by: pnpm test,Completed,lastContactedAt updates on interactions; stale contact insight works; migration reversible; test coverage >=90%,15,ARTIFACT:packages/db/prisma/migrations/*_add_contact_last_contacted/migration.sql;ARTIFACT:packages/application/src/services/ContactService.ts;EVIDENCE:.specify/sprints/sprint-15/attestations/IFC-192/attestation.json;SPEC:.specify/sprints/sprint-15/specifications/IFC-192-spec.md;PLAN:.specify/sprints/sprint-15/planning/IFC-192-plan.md,VALIDATE:pnpm test;GATE:coverage-gte-90,90/180/360,2026-02-27,2026-02-27,100,"IFC-182:FS,IFC-184:FS",
IFC-193,Infrastructure,"Activity Feed Type Registry - Enum-based mapping from AuditLogEntry.eventType to ActivityFeedType with metadata REOPENED 16/11/2026 (self-claimed done, DoD partly met): DoD 'enum-based mapping from AuditLogEntry.eventType to ActivityFeedType': ActivityTypeRegistry is used nowhere outside its test.",pg-208,IFC-182,FILE:apps/api/src/modules/home/home.router.ts;FILE:packages/domain/src/crm/activity/ActivityTypeRegistry.ts;FILE:packages/validators/src/home.ts,ACTIVITY_TYPE_REGISTRY constant maps all AuditLogEntry.eventType values to ActivityFeedType with icon/label/color metadata; router uses registry instead of string includes(); new event types require only registry entry; verified by: pnpm test,Backlog,All event types mapped; registry extensible; no string matching in router; test coverage >=90%,43,ARTIFACT:packages/domain/src/crm/activity/ActivityTypeRegistry.ts;ARTIFACT:packages/domain/src/crm/activity/__tests__/ActivityTypeRegistry.test.ts;EVIDENCE:.specify/sprints/sprint-16/attestations/IFC-193/attestation.json;EVIDENCE:.specify/sprints/sprint-16/attestations/IFC-193/attestation.json;SPEC:.specify/sprints/sprint-16/specifications/IFC-193-spec.md;PLAN:.specify/sprints/sprint-16/planning/IFC-193-plan.md,VALIDATE:pnpm test;GATE:coverage-gte-90,60/120/240,2027-08-08,2027-08-21,50,IFC-182:FS,
IFC-194,Architecture,Router Middleware Standardization - Migrate all routers from manual getTenantId to tenantProcedure,Backend Dev (STOA-Foundation),"IFC-182,IFC-003",FILE:apps/api/src/trpc.ts;FILE:apps/api/src/router.ts;FILE:apps/api/src/modules/home/home.router.ts,All tenant-scoped routers use tenantProcedure from trpc.ts; manual getTenantId/getUserId helpers removed; consistent ctx.tenantId access pattern across all routers; architecture test enforces tenantProcedure usage; verified by: pnpm test,Completed,All routers use tenantProcedure; no manual tenant extraction; architecture test passing; zero functional regressions,16,ARTIFACT:tests/architecture/tenant-procedure-enforcement.test.ts;EVIDENCE:.specify/sprints/sprint-16/attestations/IFC-194/attestation.json;SPEC:.specify/sprints/sprint-16/specifications/IFC-194-spec.md;PLAN:.specify/sprints/sprint-16/planning/IFC-194-plan.md,VALIDATE:pnpm test;GATE:architecture-test-pass,90/180/360,2026-03-10,2026-03-10,100,"IFC-182:FS,IFC-003:FS",
IFC-195,Core CRM,Customizable Daily Goals - Multi-type goal support (revenue calls meetings tasks custom) with user preferences,Backend Dev (STOA-Domain),IFC-182,FILE:apps/api/src/modules/home/home.router.ts;FILE:packages/validators/src/home.ts;FILE:apps/web/src/components/home/AuthenticatedHomePage.tsx,home.getDailyGoal calculates progress for all 5 goal types (revenue/calls/meetings/tasks/custom); home.updateDailyGoal mutation saves goal preferences; user can select goal type and target from settings modal; default remains $5000 revenue; verified by: pnpm test,Completed,All 5 goal types calculate correctly; preferences persist; settings modal works; test coverage >=90%,15,ARTIFACT:apps/api/src/modules/home/home.router.ts;ARTIFACT:apps/web/src/components/home/GoalSettingsModal.tsx;ARTIFACT:packages/validators/src/home.ts;EVIDENCE:.specify/sprints/sprint-15/attestations/IFC-195/attestation.json;EVIDENCE:.specify/sprints/sprint-15/attestations/IFC-195/attestation.json,VALIDATE:pnpm test;GATE:coverage-gte-90,90/180/360,2026-02-27,2026-02-28,100,IFC-182:FS,
IFC-196,Performance,Home Page Response Caching - Redis caching for getWelcomeSummary with event-driven invalidation,Backend Dev (STOA-Foundation),"IFC-182,IFC-075",FILE:apps/api/src/modules/home/home.router.ts;FILE:packages/adapters/src/cache/RedisCacheAdapter.ts,getWelcomeSummary cached in Redis with 5-minute TTL; cache key: tenant:userId:home:summary; invalidated on lead/opportunity/task mutations via domain events; graceful fallback to direct queries when Redis unavailable; verified by: pnpm test,Completed,Cache hit rate >80%; p95 <50ms on cache hit; graceful degradation; invalidation correct; test coverage >=90%,17,ARTIFACT:apps/api/src/modules/home/home.cache.ts;ARTIFACT:apps/api/src/modules/home/__tests__/home.cache.test.ts;EVIDENCE:.specify/sprints/sprint-17/attestations/IFC-196/attestation.json,VALIDATE:pnpm test;GATE:coverage-gte-90,90/180/360,2026-04-13,2026-04-13,100,"IFC-182:FS,IFC-075:FS",
IFC-197,AI Intelligence,AI Monitoring tRPC Router - Expose drift detection latency metrics hallucination checks ROI tracking and agent status via tRPC endpoints,Backend Dev (STOA-Intelligence),"IFC-117,IFC-125",FILE:apps/ai-worker/src/monitoring/index.ts;FILE:apps/ai-worker/src/monitoring/drift-detector.ts;FILE:apps/ai-worker/src/monitoring/latency-monitor.ts;FILE:apps/ai-worker/src/monitoring/hallucination-checker.ts;FILE:apps/ai-worker/src/monitoring/roi-tracker.ts,tRPC router with endpoints: getDriftMetrics getLatencyMetrics getHallucinationReport getROIMetrics getMonitoringStatus getActiveAgents getAgentLogs; all endpoints tenant-isolated; response <200ms; verified by: pnpm test,Completed,Endpoints respond <200ms; all monitoring data accessible via API; tenant isolation enforced; test coverage >=90%,7,ARTIFACT:apps/api/src/modules/ai-monitoring/ai-monitoring.router.ts;ARTIFACT:apps/api/src/modules/ai-monitoring/__tests__/ai-monitoring.router.test.ts;EVIDENCE:.specify/sprints/sprint-7/attestations/IFC-197/attestation.json,VALIDATE:pnpm test;GATE:coverage-gte-90,60/120/240,2026-02-09,2026-02-10,100,"IFC-117:FS,IFC-125:FS",
PG-148,AI Intelligence,Lead Scoring Dashboard at /agent-approvals/lead-scoring - Score distributions model accuracy top leads factor breakdown,Frontend Dev (STOA-Intelligence),"IFC-005,IFC-023,IFC-181",FILE:apps/ai-worker/src/chains/scoring.chain.ts;FILE:packages/ui/src/components/score/ConfidenceIndicator.tsx;FILE:apps/web/src/components/sidebar/configs/agent-approvals.ts;FILE:docs/design/UI_DEVELOPMENT_PROMPT.md,Page renders at /agent-approvals/lead-scoring; score distribution chart; model accuracy metrics; top-scored leads list; factor breakdown per lead; reuses ConfidenceIndicator and ScoreCard components; Lighthouse >=90; verified by: pnpm test,Completed,Page loads <500ms; score data accurate; charts render correctly; reuses existing score components; Lighthouse >=90; test coverage >=90%,7,ARTIFACT:apps/web/src/app/agent-approvals/lead-scoring/page.tsx;ARTIFACT:apps/web/src/components/ai-intelligence/LeadScoringDashboard.tsx;ARTIFACT:apps/web/src/components/ai-intelligence/__tests__/LeadScoringDashboard.test.tsx;EVIDENCE:.specify/sprints/sprint-7/attestations/PG-148/attestation.json,VALIDATE:pnpm test;GATE:lighthouse-gte-90,90/180/360,2026-02-16,2026-02-16,100,"IFC-005:FS,IFC-023:FS,IFC-181:FS",
PG-149,AI Intelligence,Experiments Dashboard at /agent-approvals/experiments - A/B test management experiment results statistical analysis variant comparison,Frontend Dev (STOA-Intelligence),"IFC-025,IFC-181",FILE:apps/api/src/modules/experiment/experiment.router.ts;FILE:apps/ai-worker/src/analytics/statistical-analysis.ts;FILE:apps/web/src/components/sidebar/configs/agent-approvals.ts;FILE:docs/design/UI_DEVELOPMENT_PROMPT.md,Page renders at /agent-approvals/experiments; experiment list with status filters; create/start/stop/complete actions; statistical significance display; variant comparison charts; confidence intervals; verified by: pnpm test,Completed,Page loads <500ms; experiments manageable; statistical results accurate; variant comparison visible; Lighthouse >=90; test coverage >=90%,7,ARTIFACT:apps/web/src/app/agent-approvals/experiments/page.tsx;ARTIFACT:apps/web/src/components/ai-intelligence/ExperimentsDashboard.tsx;ARTIFACT:apps/web/src/components/ai-intelligence/__tests__/ExperimentsDashboard.test.tsx;EVIDENCE:.specify/sprints/sprint-7/attestations/PG-149/attestation.json,VALIDATE:pnpm test;GATE:lighthouse-gte-90,120/240/480,2026-02-16,2026-02-18,100,"IFC-025:FS,IFC-181:FS",
PG-150,AI Intelligence,AI Review History at /agent-approvals/history - Filterable history of all AI output reviews with timeline and audit trail,Frontend Dev (STOA-Intelligence),"IFC-181,IFC-180",FILE:apps/api/src/modules/ai-review/ai-review.router.ts;FILE:apps/web/src/lib/ai-review/hooks.ts;FILE:apps/web/src/components/ai-review/ReviewCard.tsx;FILE:apps/web/src/components/sidebar/configs/agent-approvals.ts;FILE:docs/design/UI_DEVELOPMENT_PROMPT.md,Page renders at /agent-approvals/history; full review history with date range status and output type filters; timeline visualization; audit trail per review; reuses ReviewCard component; verified by: pnpm test,Completed,Page loads <500ms; filters work correctly; timeline renders; audit trail complete; Lighthouse >=90; test coverage >=90%,7,ARTIFACT:apps/web/src/app/agent-approvals/history/page.tsx;ARTIFACT:apps/web/src/components/ai-intelligence/ReviewHistory.tsx;ARTIFACT:apps/web/src/components/ai-intelligence/__tests__/ReviewHistory.test.tsx;EVIDENCE:.specify/sprints/sprint-7/attestations/PG-150/attestation.json,VALIDATE:pnpm test;GATE:lighthouse-gte-90,90/180/360,2026-02-16,2026-02-16,100,"IFC-181:FS,IFC-180:FS",
PG-151,AI Intelligence,Active Agents Dashboard at /agent-approvals/agents - Agent status monitoring active sessions task assignments health indicators,Frontend Dev (STOA-Intelligence),"IFC-021,IFC-139,IFC-197",FILE:apps/api/src/modules/agent/agent.router.ts;FILE:apps/ai-worker/src/agents/crew.ts;FILE:apps/web/src/components/sidebar/configs/agent-approvals.ts;FILE:docs/design/UI_DEVELOPMENT_PROMPT.md,Page renders at /agent-approvals/agents; active agent list with health status; current task assignments; session history; agent type breakdown (qualification email followup NBA); health indicators; verified by: pnpm test,Completed,Page loads <500ms; agent status accurate; task assignments visible; health indicators working; Lighthouse >=90; test coverage >=90%,8,ARTIFACT:apps/web/src/app/agent-approvals/agents/page.tsx;ARTIFACT:apps/web/src/components/ai-monitoring/ActiveAgentsDashboard.tsx;ARTIFACT:apps/web/src/components/ai-monitoring/__tests__/ActiveAgentsDashboard.test.tsx;EVIDENCE:.specify/sprints/sprint-8/attestations/PG-151/attestation.json,VALIDATE:pnpm test;GATE:lighthouse-gte-90,120/240/480,2026-02-18,2026-02-18,100,"IFC-021:FS,IFC-139:FS,IFC-197:FS",
PG-152,AI Intelligence,Agent Logs Viewer at /agent-approvals/logs - Conversation transcripts tool call records searchable log timeline,Frontend Dev (STOA-Intelligence),"IFC-148,IFC-197",FILE:apps/api/src/modules/agent/conversation.router.ts;FILE:apps/web/src/components/sidebar/configs/agent-approvals.ts;FILE:docs/design/UI_DEVELOPMENT_PROMPT.md,Page renders at /agent-approvals/logs; conversation transcript viewer; tool call records with inputs/outputs; searchable log timeline; log level and date range filtering; verified by: pnpm test,Completed,Page loads <500ms; logs searchable; transcripts readable; tool calls detailed; Lighthouse >=90; test coverage >=90%,8,ARTIFACT:apps/web/src/app/agent-approvals/logs/page.tsx;ARTIFACT:apps/web/src/components/ai-monitoring/AgentLogsViewer.tsx;ARTIFACT:apps/web/src/components/ai-monitoring/__tests__/AgentLogsViewer.test.tsx;EVIDENCE:.specify/sprints/sprint-8/attestations/PG-152/attestation.json,VALIDATE:pnpm test;GATE:lighthouse-gte-90,120/240/480,2026-02-17,2026-02-17,100,"IFC-148:FS,IFC-197:FS",
PG-153,AI Intelligence,Latency Monitor Dashboard at /agent-approvals/latency - SLO compliance latency percentiles chain performance phase-level monitoring,Frontend Dev (STOA-Intelligence),"IFC-117,IFC-197",FILE:apps/ai-worker/src/monitoring/latency-monitor.ts;FILE:apps/web/src/components/sidebar/configs/agent-approvals.ts;FILE:docs/design/UI_DEVELOPMENT_PROMPT.md,Page renders at /agent-approvals/latency; SLO compliance gauges (p50 p95 p99); latency percentile charts per chain; phase-level breakdown; historical trends; alert thresholds; verified by: pnpm test,Completed,Page loads <500ms; SLO data accurate; percentiles render correctly; phase breakdown visible; Lighthouse >=90; test coverage >=90%,8,ARTIFACT:apps/web/src/app/agent-approvals/latency/page.tsx;ARTIFACT:apps/web/src/components/ai-monitoring/LatencyMonitorDashboard.tsx;ARTIFACT:apps/web/src/components/ai-monitoring/__tests__/LatencyMonitorDashboard.test.tsx;EVIDENCE:.specify/sprints/sprint-8/attestations/PG-153/attestation.json,VALIDATE:pnpm test;GATE:lighthouse-gte-90,120/240/480,2026-02-17,2026-02-17,100,"IFC-117:FS,IFC-197:FS",
IFC-198,Billing Pages,"Billing Domain Core - Invoice/Receipt aggregates, payment state machine, tax/refund rules",Backend Dev + FinOps (STOA-Domain),"IFC-099,IFC-107",IMPLEMENTS:FLOW-048;FILE:docs/planning/prd-billing-portal.md;FILE:docs/architecture/adr/ADR-029-billing-architecture.md;FILE:docs/planning/prd-erp-connectors.md;FILE:docs/architecture/adr/ADR-019-core-crm-foundation.md;ENV:Billing provider credentials configured,"Invoice and receipt domain models implemented with invariant checks, payment/refund lifecycle rules exposed via application services; artifacts: Invoice.ts, Receipt.ts, BillingDomainService.ts; verified by: pnpm test",Completed,"100% billing state transitions validated, 0 invalid status transitions in tests, p95 billing rule evaluation <50ms",13,ARTIFACT:packages/domain/src/crm/billing/Invoice.ts;ARTIFACT:packages/domain/src/crm/billing/Receipt.ts;ARTIFACT:packages/application/src/services/BillingDomainService.ts;ARTIFACT:packages/application/src/services/__tests__/BillingDomainService.test.ts;EVIDENCE:.specify/sprints/sprint-13/attestations/IFC-198/attestation.json;ARTIFACT:docs/planning/prd-billing-domain.md,VALIDATE:pnpm test;AUDIT:design-review;GATE:billing-invariants-pass,240/480/720,2026-02-09,2026-02-09,100,"IFC-099:FS,IFC-107:FS",
IFC-199,Core CRM,"Document Domain Core - lifecycle, signature state machine, ACL and retention invariants",pg-208,"IFC-106,IFC-127",FILE:docs/planning/prd-core-crm.md;FILE:docs/architecture/adr/ADR-019-core-crm-foundation.md;ENV:Document storage bucket provisioned,"Document aggregate and signature lifecycle rules implemented with ACL/retention validation, wired through application services; artifacts: Document.ts, DocumentLifecycle.ts, DocumentDomainService.ts; verified by: pnpm test",Backlog,"100% document lifecycle transitions validated, 100% ACL checks covered by tests, p95 document rule evaluation <50ms",40,ARTIFACT:packages/domain/src/crm/document/Document.ts;ARTIFACT:packages/domain/src/crm/document/DocumentLifecycle.ts;ARTIFACT:packages/application/src/services/DocumentDomainService.ts;ARTIFACT:packages/application/src/services/__tests__/DocumentDomainService.test.ts;EVIDENCE:.specify/sprints/sprint-29/attestations/IFC-199/context_ack.json;ARTIFACT:docs/planning/prd-document-domain.md,VALIDATE:pnpm test;AUDIT:design-review;GATE:document-lifecycle-invariants-pass,240/480/720,2027-06-27,2027-07-10,0,"IFC-106:FS,IFC-127:FS",
